# WBSTool Project

Schedule from ProjectLibre, 2018-10-22 to 2019-04-24.

## Calendars

- Standard: Mon-Fri 08:00-12:00, 13:00-17:00; Sat-Sun off.

## Resources

| Resource |
| --- |
| No Asignado |
| Programador Junior1 |
| Programador Junior2 |
| Analista-Diseñador |
| Analista-Programador |
| Programador Senior |
| Director de proyecto |

## Schedule

| ID | WBS | Task | Duration | Start | Finish | Predecessors | Total slack | Constraint | Resources |
| --- | --- | --- | --- | --- | --- | --- | --- | --- | --- |
| 1 | 1 | **Proyecto de sistema para bar tecnológico** | 132.08d | 2018-10-22 08:00 | 2019-04-24 08:40 |  |  | start no earlier than 2019-01-01 08:00 |  |
| 2 | 1.1 | **Análisis de requisitos del sistema** | 69.25d | 2018-10-22 08:00 | 2019-01-25 10:00 |  |  |  |  |
| 3 | 1.1.1 | **Identificación de las necesidades del cliente** | 55.5d | 2018-10-22 08:00 | 2019-01-07 13:00 |  |  |  |  |
| 4 | 1.1.1.1 | **Especificación informal del sistema** | 55.5d | 2018-10-22 08:00 | 2019-01-07 13:00 |  |  |  |  |
| 5 | 1.1.1.1.1 | **Técnica de obtención de requisitos** | 3d | 2018-10-22 08:00 | 2018-10-24 17:00 |  | 5060d |  |  |
| 6 | 1.1.1.1.1.1 | Preparar preguntas y temáticas para entrevista inicial | 0.5d | 2018-10-22 08:00 | 2018-10-22 13:00 |  | 5060d |  | Analista-Diseñador |
| 7 | 1.1.1.1.1.2 | Entrevistar jefe de proyecto | 0.5d | 2018-10-22 13:00 | 2018-10-22 17:00 | 6 | 5060d |  | Analista-Diseñador; Director de proyecto |
| 8 | 1.1.1.1.1.3 | Cuestionar futuros empleados para conocer sus necesidades | 1d | 2018-10-23 08:00 | 2018-10-23 17:00 | 7 | 5060d |  | Analista-Diseñador |
| 9 | 1.1.1.1.1.4 | Cuestionar posibles clientes para conocer sus preferencias | 1d | 2018-10-24 08:00 | 2018-10-24 17:00 | 8 | 5060d |  | Analista-Diseñador |
| 10 | 1.1.1.2 | **Determinación informal de aspectos del sistema** | 52.5d | 2018-10-25 08:00 | 2019-01-07 13:00 | 5 |  |  |  |
| 11 | 1.1.1.1.2.1 | Determinar necesidades de jefe de proyectos | 0.5d | 2018-10-25 08:00 | 2018-10-25 13:00 |  | 5060d |  | Analista-Diseñador; Director de proyecto |
| 12 | 1.1.1.2.1 | **Determinación informal de funciones** | 51d | 2018-10-25 13:00 | 2019-01-04 13:00 | 11 | 20d |  |  |
| 13 | 1.1.1.1.2.2.1 | Cuestionar futuros empleados para conocer sus necesidades | 0.1d | 2018-10-25 13:00 | 2018-10-25 13:48 |  | 5060d |  | Analista-Diseñador |
| 14 | 1.1.1.1.2.2.2 | Cuestionar posibles clientes para conocer sus preferencias | 0.1d | 2019-01-04 11:12 | 2019-01-04 13:00 | 25 | 20d | start no earlier than 2019-01-04 11:12 | Analista-Diseñador |
| 15 | 1.1.1.2.2 | **Determinación informal de información manejada** | 51.6d | 2018-10-25 13:48 | 2019-01-07 09:36 | 11 |  |  |  |
| 16 | 1.1.1.1.2.3.1 | Cuestionar futuros empleados para conocer sus necesidades | 0.1d | 2018-10-25 13:48 | 2018-10-25 14:36 | 13 | 5060d |  | Analista-Diseñador |
| 17 | 1.1.1.1.2.3.2 | Cuestionar posibles clientes para conocer sus preferencias | 0.1d | 2019-01-07 08:48 | 2019-01-07 09:36 | 14 |  |  | Analista-Diseñador |
| 18 | 1.1.1.2.3 | **Determinación informal de interfaces del sistema** | 51.6d | 2018-10-25 14:36 | 2019-01-07 10:24 | 11 |  |  |  |
| 19 | 1.1.1.1.2.4.1 | Cuestionar futuros empleados para conocer sus necesidades | 0.1d | 2018-10-25 14:36 | 2018-10-25 15:24 | 16 | 5060d |  | Analista-Diseñador |
| 20 | 1.1.1.1.2.4.2 | Cuestionar posibles clientes para conocer sus preferencias | 0.1d | 2019-01-07 09:36 | 2019-01-07 10:24 | 17 |  |  | Analista-Diseñador |
| 21 | 1.1.1.2.4 | **Determinación informal de rendimiento del sistema** | 51.6d | 2018-10-25 15:24 | 2019-01-07 11:12 | 11 |  |  |  |
| 22 | 1.1.1.1.2.5.1 | Cuestionar futuros empleados para conocer sus necesidades | 0.1d | 2018-10-25 15:24 | 2018-10-25 16:12 | 19 | 5060d |  | Analista-Diseñador |
| 23 | 1.1.1.1.2.5.2 | Cuestionar posibles clientes para conocer sus preferencias | 0.1d | 2019-01-07 10:24 | 2019-01-07 11:12 | 20 |  |  | Analista-Diseñador |
| 24 | 1.1.1.2.5 | **Determinación informal de las restricciones del sistema** | 51.6d | 2018-10-25 16:12 | 2019-01-07 13:00 | 11 |  |  |  |
| 25 | 1.1.1.1.2.6.1 | Cuestionar futuros empleados para conocer sus necesidades | 0.1d | 2018-10-25 16:12 | 2018-10-25 17:00 | 22 | 5060d |  | Analista-Diseñador |
| 26 | 1.1.1.1.2.6.2 | Cuestionar posibles clientes para conocer sus preferencias | 0.1d | 2019-01-07 11:12 | 2019-01-07 13:00 | 23 |  |  | Analista-Diseñador |

| ID | WBS | Task | Duration | Start | Finish | Predecessors | Resources |
| --- | --- | --- | --- | --- | --- | --- | --- |
| 27 | 1.1.2 | **Asignación de funciones a cada elemento del sistema** | 5d | 2019-01-07 13:00 | 2019-01-14 13:00 | 3 |  |
| 28 | 1.1.2.1 | **Alternativas de creación del sistema** | 2.5d | 2019-01-07 13:00 | 2019-01-09 17:00 |  |  |
| 29 | 1.1.2.1.1 | Buscar tecnologías y metodologías alternativas | 2.5d | 2019-01-07 13:00 | 2019-01-09 17:00 |  | Analista-Diseñador |
| 30 | 1.1.2.2 | Informar del progreso de la semana al Jefe de proyecto | 0.12d | 2019-01-10 08:00 | 2019-01-10 09:00 | 28 | Analista-Diseñador; Director de proyecto |
| 31 | 1.1.2.2 | **Validación de las alternativas de creación del sistema** | 2.38d | 2019-01-10 09:00 | 2019-01-14 13:00 | 30 |  |
| 32 | 1.1.2.3.1 | Analizar las alternativas obtenidas | 1d | 2019-01-10 09:00 | 2019-01-11 09:00 |  | Analista-Diseñador |
| 33 | 1.1.2.3.2 | Comparar las alternativas con la propuesta original | 1d | 2019-01-11 09:00 | 2019-01-14 09:00 | 32 | Analista-Diseñador |
| 34 | 1.1.2.3.3 | Decidir finalmente que tecnología usar | 0.25d | 2019-01-14 09:00 | 2019-01-14 11:00 | 33 | Analista-Diseñador |
| 35 | 1.1.2.3.4 | Informar al Jefe del progreso de la semana | 0.12d | 2019-01-14 11:00 | 2019-01-14 13:00 | 34 | Analista-Diseñador; Director de proyecto |
| 36 | 1.1.3 | **Evaluación de la viabilidad del sistema** | 7.62d | 2019-01-14 13:00 | 2019-01-24 09:00 | 27 |  |
| 37 | 1.1.3.1 | **Estudio de viabilidad económico** | 2.5d | 2019-01-14 13:00 | 2019-01-16 17:00 |  |  |
| 38 | 1.1.3.1.1 | Realizar análisis de costes económicos | 0.62d | 2019-01-14 13:00 | 2019-01-15 09:00 |  | Analista-Diseñador |
| 39 | 1.1.3.1.2 | Realizar análisis de mercado | 0.62d | 2019-01-15 09:00 | 2019-01-15 15:00 | 38 | Analista-Diseñador |
| 40 | 1.1.3.1.3 | Realizar estimaciones coste-beneficio y tiempo-beneficio | 0.62d | 2019-01-15 15:00 | 2019-01-16 11:00 | 39 | Analista-Diseñador |
| 41 | 1.1.3.1.4 | Reunirse con el jefe para decidir su el proyecto se considera viable | 0.62d | 2019-01-16 11:00 | 2019-01-16 17:00 | 40 | Analista-Diseñador |
| 42 | 1.1.3.2 | **Estudio de viabilidad técnico** | 1.75d | 2019-01-17 08:00 | 2019-01-18 15:00 | 37 |  |
| 43 | 1.1.3.2.1 | Estudiar las tecnologías disponibles para el proyecto | 0.62d | 2019-01-17 08:00 | 2019-01-17 14:00 |  | Analista-Programador |
| 44 | 1.1.3.2.2 | Analizar recursos y tecnologías a las que tiene acceso la empresa | 0.25d | 2019-01-17 14:00 | 2019-01-17 16:00 | 43 | Analista-Programador |
| 45 | 1.1.3.2.3 | Analizar recursos y tecnologías de terceros que podrían comprarse o contratarse | 0.25d | 2019-01-17 16:00 | 2019-01-18 09:00 | 44 | Analista-Programador |
| 46 | 1.1.3.2.4 | Analizar con la información obtenida si el proyecto es viable | 0.62d | 2019-01-18 09:00 | 2019-01-18 15:00 | 45 | Analista-Programador |
| 47 | 1.1.3.3 | Informar al jefe del progreso semanal | 0.12d | 2019-01-18 15:00 | 2019-01-18 16:00 | 42 | Analista-Programador; Director de proyecto |
| 48 | 1.1.3.3 | **Estudio de viabilidad legal** | 2d | 2019-01-18 16:00 | 2019-01-22 16:00 | 42, 47 |  |
| 49 | 1.1.3.4.1 | Estudiar las leyes relacionadas con la parte tecnológica del proyecto | 0.5d | 2019-01-18 16:00 | 2019-01-21 11:00 |  | Director de proyecto |
| 50 | 1.1.3.4.2 | Estudiar las leyes relacionadas con al parte de hostelería del proyecto | 0.5d | 2019-01-21 11:00 | 2019-01-21 16:00 | 49 | Director de proyecto |
| 51 | 1.1.3.4.3 | Estudiar las leyes relacionadas con salud e higiene de local | 0.5d | 2019-01-21 16:00 | 2019-01-22 11:00 | 50 | Director de proyecto |
| 52 | 1.1.3.4.4 | Realizar un informe sobre los estudios legales | 0.38d | 2019-01-22 11:00 | 2019-01-22 15:00 | 51 | Director de proyecto |
| 53 | 1.1.3.4.5 | Analizar con la información obtenida si el proyecto es legalmente viable | 0.12d | 2019-01-22 15:00 | 2019-01-22 16:00 | 52 | Director de proyecto |

| ID | WBS | Task | Duration | Start | Finish | Predecessors | Total slack | Resources |
| --- | --- | --- | --- | --- | --- | --- | --- | --- |
| 54 | 1.1.3.4 | **Estudio de viabilidad de plazos** | 1.25d | 2019-01-22 16:00 | 2019-01-24 09:00 | 48 |  |  |
| 55 | 1.1.3.5.1 | Realizar análisis de costes temporales | 1d | 2019-01-22 16:00 | 2019-01-23 16:00 |  |  | Analista-Diseñador |
| 56 | 1.1.3.5.2 | Realizar planificación de distribución de trabajo | 0.25d | 2019-01-22 16:00 | 2019-01-23 09:00 |  | 75d | Analista-Diseñador |
| 57 | 1.1.3.5.3 | Determinar si el proyecto es viable en el tiempo elegido | 0.25d | 2019-01-23 16:00 | 2019-01-24 09:00 | 56, 55 |  | Analista-Diseñador |
| 58 | 1.1.4 | **Obtención de una definición del sistema** | 1.12d | 2019-01-24 09:00 | 2019-01-25 10:00 | 36 |  |  |
| 59 | 1.1.4.1 | **Especificación formal del sistema** | 0.4d | 2019-01-24 09:00 | 2019-01-24 13:12 |  |  |  |
| 60 | 1.1.4.1.1 | **Diagrama de contexto** | 0.2d | 2019-01-24 09:00 | 2019-01-24 10:36 |  |  |  |
| 61 | 1.1.4.1.1.1 | Dibujar el diagrama de contexto | 0.2d | 2019-01-24 09:00 | 2019-01-24 10:36 |  |  | Analista-Programador |
| 62 | 1.1.4.1.2 | **Diagrama de sistema** | 0.2d | 2019-01-24 10:36 | 2019-01-24 13:12 | 60 |  |  |
| 63 | 1.1.4.1.2.1 | Dibujar el diagrama de sistema | 0.2d | 2019-01-24 10:36 | 2019-01-24 13:12 |  |  | Analista-Programador |
| 64 | 1.1.4.2 | **Representación del sistema** | 0.6d | 2019-01-24 13:12 | 2019-01-25 09:00 | 59 |  |  |
| 65 | 1.1.4.2.1 | **Diagramas de flujo de datos** | 0.2d | 2019-01-24 13:12 | 2019-01-24 14:48 |  |  |  |
| 66 | 1.1.4.2.1.1 | Dibujar el diagrama de sistema | 0.2d | 2019-01-24 13:12 | 2019-01-24 14:48 |  |  | Analista-Diseñador |
| 67 | 1.1.4.2.2 | **Diagramas de flujo de control** | 0.2d | 2019-01-24 14:48 | 2019-01-24 16:24 | 65 |  |  |
| 68 | 1.1.4.2.2.1 | Dibujar el diagrama de sistema | 0.2d | 2019-01-24 14:48 | 2019-01-24 16:24 |  |  | Analista-Diseñador |
| 69 | 1.1.4.2.3 | **Diagramas del ámbito de la información** | 0.2d | 2019-01-24 16:24 | 2019-01-25 09:00 | 67 |  |  |
| 70 | 1.1.4.2.3.1 | Dibujar el diagrama de sistema | 0.2d | 2019-01-24 16:24 | 2019-01-25 09:00 |  |  | Analista-Diseñador |
| 71 | 1.1.4.3 | Informar al Jefe del progreso semanal | 0.12d | 2019-01-25 09:00 | 2019-01-25 10:00 | 64 |  | Analista-Diseñador; Director de proyecto |
| 72 | 1.2 | **Análisis de requisitos del software** | 2.75d | 2019-01-25 10:00 | 2019-01-29 17:00 | 2 |  |  |
| 73 | 1.2.1 | **Extracción o determinación de requisitos** | 0.38d | 2019-01-25 10:00 | 2019-01-25 14:00 |  |  |  |
| 74 | 1.2.1.1 | **Documentos de reuniones con cliente** | 0.12d | 2019-01-25 10:00 | 2019-01-25 11:00 |  |  |  |
| 75 | 1.2.1.1.1 | Realizar un acta de reunión para la reunión con el cliente | 0.12d | 2019-01-25 10:00 | 2019-01-25 11:00 |  |  | Analista-Diseñador |
| 76 | 1.2.1.1.2 | Realizar un informe sobre las solicitudes e información que se obtuvo del cliente | 0.12d | 2019-01-25 10:00 | 2019-01-25 11:00 |  |  | Analista-Diseñador; Analista-Programador |
| 77 | 1.2.1.2 | **Especificación informal de requisitos software** | 0.25d | 2019-01-25 11:00 | 2019-01-25 14:00 | 74 |  |  |
| 78 | 1.2.1.2.1 | Redactar un primer informe de los requisitos del software a partir del informe de reunión con el cliente | 0.25d | 2019-01-25 11:00 | 2019-01-25 14:00 |  |  | Analista-Diseñador; Analista-Programador |

| ID | WBS | Task | Duration | Start | Finish | Predecessors | Resources |
| --- | --- | --- | --- | --- | --- | --- | --- |
| 79 | 1.2.2 | **Análisis de requisitos** | 0.75d | 2019-01-25 14:00 | 2019-01-28 11:00 | 73 |  |
| 80 | 1.2.2.1 | **Validación de especificación informal** | 0.12d | 2019-01-25 14:00 | 2019-01-25 15:00 |  |  |
| 81 | 1.2.2.1.1 | Analizar especificación informal para posibles mejoras | 0.12d | 2019-01-25 14:00 | 2019-01-25 15:00 |  | Analista-Diseñador |
| 82 | 1.2.2.1.2 | Buscar errores en la especificación informal | 0.12d | 2019-01-25 14:00 | 2019-01-25 15:00 |  | Analista-Programador |
| 83 | 1.2.2.2 | **Resolución de inconsistencias** | 0.25d | 2019-01-25 15:00 | 2019-01-25 17:00 | 80 |  |
| 84 | 1.2.2.2.1 | Corregir errores en la especificación informal | 0.25d | 2019-01-25 15:00 | 2019-01-25 17:00 |  | Analista-Programador |
| 85 | 1.2.2.2.2 | Encontrar redundancias y discrepancias en la especificación informal | 0.25d | 2019-01-25 15:00 | 2019-01-25 17:00 |  | Analista-Diseñador |
| 86 | 1.2.2.3 | **Coordinación de requisitos relacionados** | 0.38d | 2019-01-28 08:00 | 2019-01-28 11:00 | 83 |  |
| 87 | 1.2.2.3.1 | Formar relaciones entre requisitos que tengan puntos comunes | 0.25d | 2019-01-28 08:00 | 2019-01-28 10:00 |  | Analista-Diseñador; Analista-Programador |
| 88 | 1.2.2.3.2 | Purgar relaciones redundantes | 0.12d | 2019-01-28 10:00 | 2019-01-28 11:00 | 87 | Analista-Diseñador; Analista-Programador |
| 89 | 1.2.3 | **Especificación de requisitos** | 0.75d | 2019-01-28 11:00 | 2019-01-29 09:00 | 79 |  |
| 90 | 1.2.3.1 | **Documento de especificación formal de requisitos** | 0.5d | 2019-01-28 11:00 | 2019-01-28 16:00 |  |  |
| 91 | 1.2.3.1.1 | Redactar documento de requisitos formal | 0.5d | 2019-01-28 11:00 | 2019-01-28 16:00 |  | Analista-Programador |
| 92 | 1.2.3.2 | **Revisión de documento de especificación formal** | 0.25d | 2019-01-28 16:00 | 2019-01-29 09:00 | 90 |  |
| 93 | 1.2.3.2.1 | Revisar documento de requisitos formal en busca de errores | 0.12d | 2019-01-28 16:00 | 2019-01-28 17:00 |  | Analista-Diseñador |
| 94 | 1.2.3.2.2 | Revisar documento de requisitos formal en busca de mejoras de formato y claridad | 0.12d | 2019-01-29 08:00 | 2019-01-29 09:00 | 93 | Analista-Diseñador |
| 95 | 1.2.4 | **Validación de requisitos** | 0.75d | 2019-01-29 09:00 | 2019-01-29 16:00 | 89 |  |
| 96 | 1.2.4.1 | **Reunión con cliente para validación de requisitos** | 0.25d | 2019-01-29 09:00 | 2019-01-29 11:00 |  |  |
| 97 | 1.2.4.1.1 | Redactar acta de reunión con el cliente y validar requisitos | 0.25d | 2019-01-29 09:00 | 2019-01-29 11:00 |  | Analista-Diseñador |
| 98 | 1.2.4.2 | **Corrección de especificación formal** | 0.25d | 2019-01-29 11:00 | 2019-01-29 14:00 | 96 |  |
| 99 | 1.2.4.2.1 | Ajustar los requisitos a partir de la validación realizada | 0.25d | 2019-01-29 11:00 | 2019-01-29 14:00 |  | Analista-Programador |
| 100 | 1.2.4.3 | **Validación de la especificación forma corregidsa** | 0.25d | 2019-01-29 14:00 | 2019-01-29 16:00 | 98 |  |
| 101 | 1.2.4.3.1 | Reunirse con el cliente para realizar la validación final de requisitos | 0.25d | 2019-01-29 14:00 | 2019-01-29 16:00 |  | Analista-Diseñador; Analista-Programador |
| 102 | 1.2.5 | Reunirse con el jefe para informar del progreso de la semana | 0.12d | 2019-01-29 16:00 | 2019-01-29 17:00 | 95 | Analista-Diseñador; Analista-Programador; Director de proyecto |

| ID | WBS | Task | Duration | Start | Finish | Predecessors | Total slack | Resources |
| --- | --- | --- | --- | --- | --- | --- | --- | --- |
| 103 | 1.3 | **Planificación de la Gestión de Riesgos** | 1.5d | 2019-01-30 08:00 | 2019-01-31 13:00 | 72 | 5658.33d |  |
| 104 | 1.3.1 | Identificar los riesgos | 0.5d | 2019-01-30 08:00 | 2019-01-30 13:00 |  | 5658.33d | Analista-Diseñador [50%]; Analista-Programador [50%] |
| 105 | 1.3.2 | Realizar análisis cualitativo | 1d | 2019-01-30 13:00 | 2019-01-31 13:00 | 104 | 5658.33d | Analista-Programador |
| 106 | 1.3.3 | Realizar análisis cuantitativo | 1d | 2019-01-30 13:00 | 2019-01-31 13:00 | 104 | 5658.33d | Analista-Diseñador |
| 107 | 1.3.4 | Planificar la respuesta de los riegos | 0.5d | 2019-01-30 13:00 | 2019-01-30 17:00 | 104 | 5708.33d | Director de proyecto; Analista-Programador |
| 108 | 1.4 | **Implementación Respuesta Riesgos** | 2d | 2019-01-31 13:00 | 2019-02-04 13:00 | 103 | 5658.33d |  |
| 109 | 1.4.1 | Plan para errores y problemas | 0.5d | 2019-01-31 13:00 | 2019-01-31 17:00 |  | 5808.33d |  |
| 110 | 1.4.2 | Revisión de aspectos legales | 1d | 2019-01-31 13:00 | 2019-02-01 13:00 |  | 5758.33d |  |
| 111 | 1.4.3 | Formación de empleados | 2d | 2019-01-31 13:00 | 2019-02-04 13:00 |  | 5658.33d |  |
| 112 | 1.4.4 | Plan de comportamiento | 0.5d | 2019-01-31 13:00 | 2019-01-31 17:00 |  | 5808.33d |  |
| 113 | 1.3 | **Diseño del sistema software** | 24.88d | 2019-01-30 08:00 | 2019-03-05 16:00 | 72 |  |  |
| 114 | 1.5.1 | Control de riesgos y daños | 1d | 2019-01-30 08:00 | 2019-01-30 17:00 |  | 2387.5d | Analista-Diseñador |
| 115 | 1.3.1 | **Diseño funcional** | 6d | 2019-01-30 08:00 | 2019-02-06 17:00 |  |  |  |
| 116 | 1.3.1.1 | **Diseño módulo del camarero** | 1d | 2019-01-30 08:00 | 2019-01-30 17:00 |  |  |  |
| 117 | 1.5.2.1.1 | Realizar diseño del módulo | 1d | 2019-01-30 08:00 | 2019-01-30 17:00 |  |  | Analista-Diseñador; Analista-Programador |
| 118 | 1.3.1.2 | **Diseño módulo de gestión de proveedores** | 1d | 2019-01-31 08:00 | 2019-01-31 17:00 | 116 |  |  |
| 119 | 1.5.2.2.1 | Realizar diseño del módulo | 1d | 2019-01-31 08:00 | 2019-01-31 17:00 |  |  | Analista-Diseñador; Analista-Programador |
| 120 | 1.3.1.3 | **Diseño módulo de cocinas/barras** | 1d | 2019-02-01 08:00 | 2019-02-01 17:00 | 118 |  |  |
| 121 | 1.5.2.3.1 | Realizar diseño del módulo | 1d | 2019-02-01 08:00 | 2019-02-01 17:00 |  |  | Analista-Diseñador; Analista-Programador |
| 122 | 1.3.1.4 | **Diseño módulo para muestra de datos y comandas** | 1d | 2019-02-04 08:00 | 2019-02-04 17:00 | 120 |  |  |
| 123 | 1.5.2.4.1 | Realizar diseño del módulo | 1d | 2019-02-04 08:00 | 2019-02-04 17:00 |  |  | Analista-Diseñador; Analista-Programador |
| 124 | 1.3.1.5 | **Diseño módulo de entretenimiento** | 1d | 2019-02-05 08:00 | 2019-02-05 17:00 | 122 |  |  |
| 125 | 1.5.2.5.1 | Realizar diseño del módulo | 1d | 2019-02-05 08:00 | 2019-02-05 17:00 |  |  | Analista-Diseñador; Analista-Programador |
| 126 | 1.3.1.6 | **Diseño módulo de monitorización general del sistema** | 1d | 2019-02-06 08:00 | 2019-02-06 17:00 | 124 |  |  |
| 127 | 1.5.2.6.1 | Realizar diseño del módulo | 1d | 2019-02-06 08:00 | 2019-02-06 17:00 |  |  | Analista-Diseñador; Analista-Programador |
| 128 | 1.5.3 | Informar al jefe del progreso semanal | 0.12d | 2019-02-07 08:00 | 2019-02-07 09:00 | 115 | 1875d | Analista-Diseñador; Director de proyecto |

| ID | WBS | Task | Duration | Start | Finish | Predecessors | Total slack | Resources |
| --- | --- | --- | --- | --- | --- | --- | --- | --- |
| 129 | 1.3.2 | **Diseño técnico** | 8.38d | 2019-02-07 08:00 | 2019-02-19 11:00 | 115 |  |  |
| 130 | 1.3.2.1 | **Selección de tecnologías** | 4.25d | 2019-02-07 08:00 | 2019-02-13 10:00 |  |  |  |
| 131 | 1.3.2.1.1 | **Base de datos a usar** | 1.5d | 2019-02-07 08:00 | 2019-02-08 13:00 |  |  |  |
| 132 | 1.5.4.1.1.1 | Comparar bases de datos disponibles | 1d | 2019-02-07 08:00 | 2019-02-07 17:00 |  |  | Analista-Programador |
| 133 | 1.5.4.1.1.2 | Elegir la opción que mejor se adapte al proyecto | 0.5d | 2019-02-08 08:00 | 2019-02-08 13:00 | 132 |  | Analista-Programador |
| 134 | 1.3.2.1.2 | **Sistema operativo y aplicaciones de las tablets** | 1.5d | 2019-02-08 13:00 | 2019-02-11 17:00 | 131 |  |  |
| 135 | 1.5.4.1.2.1 | Comparar los sistemas operativos disponibles | 1d | 2019-02-08 13:00 | 2019-02-11 13:00 |  |  | Analista-Programador |
| 136 | 1.5.4.1.2.2 | Elegir la opción que mejor se adapte al proyecto | 0.5d | 2019-02-11 13:00 | 2019-02-11 17:00 | 135 |  | Analista-Programador |
| 137 | 1.3.2.1.3 | **Lenguaje de programación y consultas SQL** | 1.25d | 2019-02-12 08:00 | 2019-02-13 10:00 | 134 |  |  |
| 138 | 1.5.4.1.3.1 | Analizar que lenguaje de programación y consultas SQL se adapta mejor a nuestra BD elegida | 1.25d | 2019-02-12 08:00 | 2019-02-13 10:00 |  |  | Analista-Programador; Programador Junior1 |
| 139 | 1.5.4.1.3.2 | Analizar que lenguaje se adapta mejor a las necesidades de la empresa | 1.25d | 2019-02-12 08:00 | 2019-02-13 10:00 |  |  | Analista-Programador; Programador Junior1 |
| 140 | 1.3.2.1.4 | **Interfaces de comunicación e interoperación con otras aplicaciones** | 1d | 2019-02-07 08:00 | 2019-02-07 17:00 |  | 325d |  |
| 141 | 1.5.4.1.4.1 | Diseñar mediante diagramas y diseño informal las interfaces | 1d | 2019-02-07 08:00 | 2019-02-07 17:00 |  | 325d | Analista-Diseñador |
| 142 | 1.5.4.2 | Informar al jefe del progreso semanal | 0.12d | 2019-02-13 10:00 | 2019-02-13 11:00 | 130 |  | Analista-Diseñador; Director de proyecto |
| 143 | 1.3.2.2 | **Validación de tecnologías** | 4d | 2019-02-13 11:00 | 2019-02-19 11:00 | 142, 130 |  |  |
| 144 | 1.3.2.2.1 | **Diseño de pruebas de rendimiento de las tecnologías** | 2d | 2019-02-13 11:00 | 2019-02-15 11:00 |  |  |  |
| 145 | 1.5.4.3.1.1 | Diseñar las pruebas de rendimiento | 2d | 2019-02-13 11:00 | 2019-02-15 11:00 |  |  | Analista-Diseñador |
| 146 | 1.3.2.2.2 | **Diseño de pruebas de coste de las tecnologías** | 2d | 2019-02-15 11:00 | 2019-02-19 11:00 | 144 |  |  |
| 147 | 1.5.4.3.2.1 | Diseñar las pruebas de coste | 2d | 2019-02-15 11:00 | 2019-02-19 11:00 |  |  | Analista-Diseñador |
| 148 | 1.5.5 | Informar al jefe del progreso semanal | 0.12d | 2019-02-19 11:00 | 2019-02-19 13:00 | 129 | 1037.5d | Analista-Diseñador; Director de proyecto |
| 149 | 1.3.3 | **Diseño de pruebas** | 7.5d | 2019-02-19 11:00 | 2019-02-28 16:00 | 129 |  |  |
| 150 | 1.3.3.1 | **Diseño de pruebas de aceptación** | 3d | 2019-02-19 11:00 | 2019-02-22 11:00 |  | 300d |  |
| 151 | 1.3.3.1.1 | **Diseño de pruebas para los gerentes del local** | 1.5d | 2019-02-19 11:00 | 2019-02-20 16:00 |  | 300d |  |
| 152 | 1.5.6.1.1.1 | Redactar informe de los minimos que deben cubrir las pruebas | 0.5d | 2019-02-19 11:00 | 2019-02-19 16:00 |  | 300d | Analista-Diseñador |
| 153 | 1.5.6.1.1.2 | Diseñar las pruebas basandose en los informes | 1d | 2019-02-19 16:00 | 2019-02-20 16:00 | 152 | 300d | Analista-Diseñador |

| ID | WBS | Task | Duration | Start | Finish | Predecessors | Total slack | Resources |
| --- | --- | --- | --- | --- | --- | --- | --- | --- |
| 154 | 1.3.3.1.2 | **Diseño de pruebas sobre el personal del local** | 1.5d | 2019-02-19 11:00 | 2019-02-20 16:00 |  |  |  |
| 155 | 1.5.6.1.2.1 | Redactar informe de los minimos que deben cubrir las pruebas | 0.5d | 2019-02-19 11:00 | 2019-02-19 16:00 |  |  | Analista-Programador |
| 156 | 1.5.6.1.2.2 | Diseñar las pruebas basandose en los informes | 1d | 2019-02-19 16:00 | 2019-02-20 16:00 | 155 |  | Analista-Programador |
| 157 | 1.3.3.1.3 | **Diseño de pruebas sobre los usuarios del local** | 1.5d | 2019-02-19 11:00 | 2019-02-20 16:00 |  | 450d |  |
| 158 | 1.5.6.1.3.1 | Redactar informe de los minimos que deben cubrir las pruebas | 0.5d | 2019-02-19 11:00 | 2019-02-19 16:00 |  | 450d | Programador Junior1; Programador Junior2 |
| 159 | 1.5.6.1.3.2 | Diseñar las pruebas basandose en los informes | 1d | 2019-02-19 16:00 | 2019-02-20 16:00 | 158 | 450d | Programador Junior1; Programador Junior2 |
| 160 | 1.3.3.1.4 | **Diseño de pruebas para los proveedores** | 1.5d | 2019-02-20 16:00 | 2019-02-22 11:00 | 151 | 300d |  |
| 161 | 1.5.6.1.4.1 | Redactar informe de los minimos que deben cubrir las pruebas | 0.5d | 2019-02-20 16:00 | 2019-02-21 11:00 |  | 300d | Analista-Diseñador |
| 162 | 1.5.6.1.4.2 | Diseñar las pruebas basandose en los informes | 1d | 2019-02-21 11:00 | 2019-02-22 11:00 | 161 | 300d | Analista-Diseñador |
| 163 | 1.3.3.2 | **Diseño de pruebas del sistema** | 3d | 2019-02-20 16:00 | 2019-02-25 16:00 |  | 300d |  |
| 164 | 1.3.3.2.1 | **Diseño de pruebas para comunicación con PayPal** | 1.5d | 2019-02-20 16:00 | 2019-02-22 11:00 | 154 |  |  |
| 165 | 1.5.6.2.1.1 | Redactar informe de los minimos que deben cubrir las pruebas | 0.5d | 2019-02-20 16:00 | 2019-02-21 11:00 |  |  | Analista-Programador |
| 166 | 1.5.6.2.1.2 | Diseñar las pruebas basandose en los informes | 1d | 2019-02-21 11:00 | 2019-02-22 11:00 | 165 |  | Analista-Programador |
| 167 | 1.3.3.2.2 | **Diseño de pruebas para comunicación con terminales TPV** | 1.5d | 2019-02-20 16:00 | 2019-02-22 11:00 | 157 | 450d |  |
| 168 | 1.5.6.2.2.1 | Redactar informe de los minimos que deben cubrir las pruebas | 0.5d | 2019-02-20 16:00 | 2019-02-21 11:00 |  | 450d | Programador Junior1; Programador Junior2 |
| 169 | 1.5.6.2.2.2 | Diseñar las pruebas basandose en los informes | 1d | 2019-02-21 11:00 | 2019-02-22 11:00 | 168 | 450d | Programador Junior1; Programador Junior2 |
| 170 | 1.3.3.2.3 | **Diseño de pruebas para comunicación con tablets del local** | 1.5d | 2019-02-22 11:00 | 2019-02-25 16:00 | 160 | 300d |  |
| 171 | 1.5.6.2.3.1 | Redactar informe de los minimos que deben cubrir las pruebas | 0.5d | 2019-02-22 11:00 | 2019-02-22 16:00 |  | 300d | Analista-Diseñador |
| 172 | 1.5.6.2.3.2 | Diseñar las pruebas basandose en los informes | 1d | 2019-02-22 16:00 | 2019-02-25 16:00 | 171 | 300d | Analista-Diseñador |
| 173 | 1.3.3.3 | **Diseño de pruebas de integración** | 1.5d | 2019-02-22 11:00 | 2019-02-25 16:00 |  |  |  |
| 174 | 1.3.3.3.1 | **Diseño de pruebas para comunicación entre módulos** | 1.5d | 2019-02-22 11:00 | 2019-02-25 16:00 | 164 |  |  |
| 175 | 1.5.6.3.1.1 | Redactar informe de los minimos que deben cubrir las pruebas | 0.5d | 2019-02-22 11:00 | 2019-02-22 16:00 |  |  | Analista-Programador |
| 176 | 1.5.6.3.1.2 | Diseñar las pruebas basandose en los informes | 1d | 2019-02-22 16:00 | 2019-02-25 16:00 | 175 |  | Analista-Programador |
| 177 | 1.3.3.4 | **Diseño de pruebas de unidad** | 3d | 2019-02-25 16:00 | 2019-02-28 16:00 | 173 |  |  |
| 178 | 1.3.3.4.1 | **Diseño de pruebas de módulo de monitorización general del sistema** | 1.5d | 2019-02-25 16:00 | 2019-02-27 11:00 |  |  |  |
| 179 | 1.5.6.4.1.1 | Redactar informe de los minimos que deben cubrir las pruebas | 0.5d | 2019-02-25 16:00 | 2019-02-26 11:00 |  |  | Analista-Diseñador |
| 180 | 1.5.6.4.1.2 | Diseñar las pruebas basandose en los informes | 1d | 2019-02-26 11:00 | 2019-02-27 11:00 | 179 |  | Analista-Diseñador |

| ID | WBS | Task | Duration | Start | Finish | Predecessors | Total slack | Resources |
| --- | --- | --- | --- | --- | --- | --- | --- | --- |
| 181 | 1.3.3.4.2 | **Diseño de pruebas de módulo de entretenimiento** | 1.5d | 2019-02-27 11:00 | 2019-02-28 16:00 | 178 |  |  |
| 182 | 1.5.6.4.2.1 | Redactar informe de los minimos que deben cubrir las pruebas | 0.5d | 2019-02-27 11:00 | 2019-02-27 16:00 |  |  | Analista-Diseñador |
| 183 | 1.5.6.4.2.2 | Diseñar las pruebas basandose en los informes | 1d | 2019-02-27 16:00 | 2019-02-28 16:00 | 182 |  | Analista-Diseñador |
| 184 | 1.3.3.4.3 | **Diseño de pruebas de módulo para muestra de datos y comandas** | 1.5d | 2019-02-25 16:00 | 2019-02-27 11:00 |  |  |  |
| 185 | 1.5.6.4.3.1 | Redactar informe de los minimos que deben cubrir las pruebas | 0.5d | 2019-02-25 16:00 | 2019-02-26 11:00 |  |  | Analista-Programador |
| 186 | 1.5.6.4.3.2 | Diseñar las pruebas basandose en los informes | 1d | 2019-02-26 11:00 | 2019-02-27 11:00 | 185 |  | Analista-Programador |
| 187 | 1.3.3.4.4 | **Diseño de pruebas de módulo de gestión de proveedores** | 1.5d | 2019-02-27 11:00 | 2019-02-28 16:00 | 184 |  |  |
| 188 | 1.5.6.4.4.1 | Redactar informe de los minimos que deben cubrir las pruebas | 0.5d | 2019-02-27 11:00 | 2019-02-27 16:00 |  |  | Analista-Programador |
| 189 | 1.5.6.4.4.2 | Diseñar las pruebas basandose en los informes | 1d | 2019-02-27 16:00 | 2019-02-28 16:00 | 188 |  | Analista-Programador |
| 190 | 1.3.3.4.5 | **Diseño de pruebas de módulo del camarero** | 1.5d | 2019-02-25 16:00 | 2019-02-27 11:00 |  |  |  |
| 191 | 1.5.6.4.5.1 | Redactar informe de los minimos que deben cubrir las pruebas | 0.5d | 2019-02-25 16:00 | 2019-02-26 11:00 |  |  | Programador Junior1; Programador Junior2 |
| 192 | 1.5.6.4.5.2 | Diseñar las pruebas basandose en los informes | 1d | 2019-02-26 11:00 | 2019-02-27 11:00 | 191 |  | Programador Junior1; Programador Junior2 |
| 193 | 1.3.3.4.6 | **Diseño de pruebas del módulo de cocinas/barra** | 1.5d | 2019-02-27 11:00 | 2019-02-28 16:00 | 190 |  |  |
| 194 | 1.5.6.4.6.1 | Redactar informe de los minimos que deben cubrir las pruebas | 0.5d | 2019-02-27 11:00 | 2019-02-27 16:00 |  |  | Programador Junior1; Programador Junior2 |
| 195 | 1.5.6.4.6.2 | Diseñar las pruebas basandose en los informes | 1d | 2019-02-27 16:00 | 2019-02-28 16:00 | 194 |  | Programador Junior1; Programador Junior2 |
| 196 | 1.5.7 | Informar al jefe del progreso semanal | 0.12d | 2019-02-28 16:00 | 2019-02-28 17:00 | 149 | 287.5d | Analista-Diseñador; Director de proyecto |
| 197 | 1.3.4 | **Planificación** | 3d | 2019-02-28 16:00 | 2019-03-05 16:00 | 149 |  |  |
| 198 | 1.3.4.1 | **Revisión de la planificación** | 2.5d | 2019-02-28 16:00 | 2019-03-05 11:00 |  |  |  |
| 199 | 1.5.8.1.1 | Revisar que la planificación se ajuste al tiempo adecuado | 1.5d | 2019-02-28 16:00 | 2019-03-04 11:00 |  |  | Analista-Programador |
| 200 | 1.5.8.1.2 | Revisar que la planificación se ajuste adecuadamente a nuestros recursos | 1d | 2019-03-04 11:00 | 2019-03-05 11:00 | 199 |  | Analista-Programador |
| 201 | 1.3.4.2 | **Validación de la planificación** | 0.5d | 2019-03-05 11:00 | 2019-03-05 16:00 | 198 |  |  |
| 202 | 1.5.8.2.1 | Reunirse con el jefe para validar la planificación revisada, incluye informe semanal | 0.5d | 2019-03-05 11:00 | 2019-03-05 16:00 |  |  | Analista-Programador; Director de proyecto |
| 203 | 1.4 | **Codificación del sistema** | 20.19d | 2019-03-05 16:00 | 2019-04-03 08:30 | 113 |  |  |
| 204 | 1.6.1 | Control de riesgos y daños | 1d | 2019-03-05 16:00 | 2019-03-06 16:00 |  | 1918.75d | Analista-Diseñador |

| ID | WBS | Task | Duration | Start | Finish | Predecessors | Total slack | Resources |
| --- | --- | --- | --- | --- | --- | --- | --- | --- |
| 205 | 1.4.1 | **Ambiente de desarrollo** | 6.38d | 2019-03-05 16:00 | 2019-03-14 10:00 |  |  |  |
| 206 | 1.4.1.1 | **Instalación del entorno de trabajo** | 2.12d | 2019-03-05 16:00 | 2019-03-07 17:00 |  |  |  |
| 207 | 1.4.1.1.1 | **Selección de tecnologías** | 0.5d | 2019-03-05 16:00 | 2019-03-06 11:00 |  |  |  |
| 208 | 1.6.2.1.1.1 | Seleccionar las tecnologías basandose en la fase de análisis | 0.5d | 2019-03-05 16:00 | 2019-03-06 11:00 |  |  | Analista-Diseñador |
| 209 | 1.4.1.1.2 | **Adquisición de tecnologías** | 0.5d | 2019-03-06 11:00 | 2019-03-06 16:00 | 207 |  |  |
| 210 | 1.6.2.1.2.1 | Realizar la compra de licencias de software de empresa | 0.5d | 2019-03-06 11:00 | 2019-03-06 16:00 |  |  | Director de proyecto |
| 211 | 1.6.2.1.2.2 | Comprar el hardware necesario | 0.5d | 2019-03-06 11:00 | 2019-03-06 16:00 |  |  | Analista-Programador |
| 212 | 1.4.1.1.3 | **Instalación en ordenadores locales** | 1d | 2019-03-06 16:00 | 2019-03-07 16:00 | 209 |  |  |
| 213 | 1.6.2.1.3.1 | Instalar el software adquirido en los ordenadores locales | 1d | 2019-03-06 16:00 | 2019-03-07 16:00 |  |  | Analista-Programador |
| 214 | 1.6.2.1.4 | Informar al jefe del progreso semanal | 0.12d | 2019-03-07 16:00 | 2019-03-07 17:00 | 212 |  | Analista-Programador; Director de proyecto |
| 215 | 1.4.1.2 | **Configuración del entorno de trabajo** | 2d | 2019-03-08 08:00 | 2019-03-11 17:00 | 206 |  |  |
| 216 | 1.4.1.2.1 | **Ajuste de propiedades generales** | 2d | 2019-03-08 08:00 | 2019-03-11 17:00 |  |  |  |
| 217 | 1.6.2.2.1.1 | Configurar el SO y programas básico de uso general | 2d | 2019-03-08 08:00 | 2019-03-11 17:00 |  |  | Director de proyecto |
| 218 | 1.4.1.2.2 | **Ajuste de propiedades específicas** | 2d | 2019-03-08 08:00 | 2019-03-11 17:00 |  |  |  |
| 219 | 1.6.2.2.2.1 | Preparar el software específico en los equipos de personal especializado | 2d | 2019-03-08 08:00 | 2019-03-11 17:00 |  |  | Programador Junior1; Programador Junior2 |
| 220 | 1.4.1.3 | **Revisiones de eficiencia y velocidad del entorno** | 2.25d | 2019-03-12 08:00 | 2019-03-14 10:00 | 215 |  |  |
| 221 | 1.4.1.3.1 | **Evaluación de eficiencia y velocidad** | 1d | 2019-03-12 08:00 | 2019-03-12 17:00 |  |  |  |
| 222 | 1.6.2.3.1.1 | Realizar evaluación de eficiencia y velocidad durante la preparación de los ordenadores | 1d | 2019-03-12 08:00 | 2019-03-12 17:00 |  |  | Programador Junior1 |
| 223 | 1.4.1.3.2 | **Reconfiguración de tecnologías o herramientas** | 1d | 2019-03-13 08:00 | 2019-03-13 17:00 | 221 |  |  |
| 224 | 1.6.2.3.2.1 | Ajustar las configuraciones iniciales basándose en las evaluaciones | 1d | 2019-03-13 08:00 | 2019-03-13 17:00 |  |  | Programador Junior2 |
| 225 | 1.4.1.3.3 | **Selección parcial de otras herramientas** | 0.25d | 2019-03-14 08:00 | 2019-03-14 10:00 | 223 |  |  |
| 226 | 1.6.2.3.3.1 | Cubrir problemas encontrados con las herramientas de terceros necesarias | 0.25d | 2019-03-14 08:00 | 2019-03-14 10:00 |  |  | Programador Junior1; Programador Junior2 |
| 227 | 1.4.2 | **Módulos** | 9.62d | 2019-03-14 10:00 | 2019-03-27 16:00 | 205 |  |  |
| 228 | 1.6.3.1 | Informar al jefe del progreso semanal | 0.12d | 2019-03-14 10:00 | 2019-03-14 11:00 |  | 112.5d | Analista-Programador; Director de proyecto |

| ID | WBS | Task | Duration | Start | Finish | Predecessors | Total slack | Resources |
| --- | --- | --- | --- | --- | --- | --- | --- | --- |
| 229 | 1.4.2.1 | **Módulo del camarero** | 2.5d | 2019-03-14 10:00 | 2019-03-18 15:00 |  | 712.5d |  |
| 230 | 1.4.2.1.1 | **Almacén de datos de camareros** | 2.5d | 2019-03-14 10:00 | 2019-03-18 15:00 |  |  |  |
| 231 | 1.6.3.2.1.1 | Preparar la BD y funciones para uso de camareros | 2.5d | 2019-03-14 10:00 | 2019-03-18 15:00 |  |  | Programador Senior |
| 232 | 1.4.2.1.2 | **Función de comunicar llamadas al camarero** | 1d | 2019-03-14 10:00 | 2019-03-15 10:00 |  | 862.5d |  |
| 233 | 1.6.3.2.2.1 | Implementar la función de llamadas al camararero mediante la interfaz diseñada | 1d | 2019-03-14 10:00 | 2019-03-15 10:00 |  | 862.5d | Programador Junior1 |
| 234 | 1.4.2.1.3 | **Función de liberar una mesa ocupada** | 1d | 2019-03-14 10:00 | 2019-03-15 10:00 |  | 862.5d |  |
| 235 | 1.6.3.2.3.1 | Implementar la función que permite liberar mesas a camareros | 1d | 2019-03-14 10:00 | 2019-03-15 10:00 |  | 862.5d | Programador Junior2 |
| 236 | 1.4.2.1.4 | **Interfaz visual agradable** | 0.5d | 2019-03-14 10:00 | 2019-03-14 15:00 |  | 912.5d |  |
| 237 | 1.6.3.2.4.1 | Programar la interfaz visual | 0.5d | 2019-03-14 10:00 | 2019-03-14 15:00 |  | 912.5d | Analista-Diseñador; Analista-Programador |
| 238 | 1.4.2.2 | **Módulo de gestión de proveedores** | 3.5d | 2019-03-14 10:00 | 2019-03-19 15:00 |  |  |  |
| 239 | 1.4.2.2.1 | **Almacén de stock** | 1d | 2019-03-18 15:00 | 2019-03-19 15:00 | 230 |  |  |
| 240 | 1.6.3.3.1.1 | Programar el gestor de stock y conectarlo a la BD | 1d | 2019-03-18 15:00 | 2019-03-19 15:00 |  |  | Programador Senior |
| 241 | 1.4.2.2.2 | **Interfaz visual agradable** | 0.5d | 2019-03-14 10:00 | 2019-03-14 15:00 |  | 300d |  |
| 242 | 1.6.3.3.2.1 | Programar la interfaz visual | 0.5d | 2019-03-14 10:00 | 2019-03-14 15:00 |  | 300d | Analista-Diseñador; Analista-Programador |
| 243 | 1.4.2.3 | **Módulo de cocinas/barra** | 2.25d | 2019-03-14 11:00 | 2019-03-18 14:00 | 228 | 112.5d |  |
| 244 | 1.4.2.3.1 | **Función de cobrar con tarjeta u otros métodos** | 2d | 2019-03-14 11:00 | 2019-03-18 11:00 |  | 137.5d |  |
| 245 | 1.6.3.4.1.1 | Programar funciones de cobro | 1.5d | 2019-03-14 11:00 | 2019-03-15 16:00 |  | 137.5d | Programador Junior1 |
| 246 | 1.6.3.4.1.2 | Adaptar funciones de cobro a todos los métodos de pago | 0.5d | 2019-03-15 16:00 | 2019-03-18 11:00 | 245 | 137.5d | Programador Junior1 |
| 247 | 1.4.2.3.2 | **Función de proteger los datos de las transacciones** | 1.5d | 2019-03-14 11:00 | 2019-03-15 16:00 |  | 187.5d |  |
| 248 | 1.6.3.4.2.1 | Asegurarse de que se guardan apropiadamente los datos | 0.5d | 2019-03-14 11:00 | 2019-03-14 16:00 |  | 187.5d | Programador Junior2 |
| 249 | 1.6.3.4.2.2 | Proteger mediante encriptación o restricciones de acceso los datos | 1d | 2019-03-14 16:00 | 2019-03-15 16:00 | 248 | 187.5d | Programador Junior2 |
| 250 | 1.4.2.3.3 | **Almacén de datos de comandas** | 2d | 2019-03-14 11:00 | 2019-03-18 11:00 |  | 112.5d |  |
| 251 | 1.6.3.4.3.1 | Programar el almacen de datos de pedidos | 2d | 2019-03-14 11:00 | 2019-03-18 11:00 |  | 112.5d | Programador Junior1; Programador Junior2 |
| 252 | 1.4.2.3.4 | **Almacén de datos de mesas** | 0.25d | 2019-03-18 11:00 | 2019-03-18 14:00 | 250 | 112.5d |  |
| 253 | 1.6.3.4.4.1 | Adaptar el almacén de datos de pedidos a las mesas | 0.25d | 2019-03-18 11:00 | 2019-03-18 14:00 | 251 | 112.5d | Programador Junior1; Programador Junior2 |

| ID | WBS | Task | Duration | Start | Finish | Predecessors | Total slack | Resources |
| --- | --- | --- | --- | --- | --- | --- | --- | --- |
| 254 | 1.4.2.4 | **Módulo para muestra de datos y comandas** | 3d | 2019-03-19 15:00 | 2019-03-22 15:00 | 238, 243 |  |  |
| 255 | 1.4.2.4.1 | **Función de seleccionar productos y pedidos** | 2d | 2019-03-19 15:00 | 2019-03-21 15:00 |  |  |  |
| 256 | 1.6.3.5.1.1 | Implementar navegación de menú | 2d | 2019-03-19 15:00 | 2019-03-21 15:00 |  |  | Programador Senior |
| 257 | 1.4.2.4.2 | **Función de plasmar información del pedido** | 1d | 2019-03-19 15:00 | 2019-03-20 15:00 |  | 50d |  |
| 258 | 1.6.3.5.2.1 | Implementar función de información de pedido | 1d | 2019-03-19 15:00 | 2019-03-20 15:00 |  | 50d | Programador Junior1 |
| 259 | 1.4.2.4.3 | **Función de enviar la comanda** | 1d | 2019-03-19 15:00 | 2019-03-20 15:00 |  | 175d |  |
| 260 | 1.6.3.5.3.1 | Imlementar función de envio de comanda | 1d | 2019-03-19 15:00 | 2019-03-20 15:00 |  | 175d | Programador Junior2 |
| 261 | 1.4.2.4.4 | **Función de reservar mesa libre** | 1d | 2019-03-19 15:00 | 2019-03-20 15:00 |  | 200d |  |
| 262 | 1.6.3.5.4.1 | Implementar función de reserva | 1d | 2019-03-19 15:00 | 2019-03-20 15:00 |  | 200d | Analista-Programador |
| 263 | 1.4.2.4.5 | **Función de ver estado de la mesa** | 1d | 2019-03-21 15:00 | 2019-03-22 15:00 |  |  |  |
| 264 | 1.6.3.5.5.1 | Implementar función de estado | 1d | 2019-03-21 15:00 | 2019-03-22 15:00 | 256 |  | Programador Senior |
| 265 | 1.4.2.4.6 | **Función de informar al cliente** | 1.5d | 2019-03-20 15:00 | 2019-03-22 10:00 |  | 50d |  |
| 266 | 1.6.3.5.6.1 | Adaptar función de comunicación para el cliente | 1.5d | 2019-03-20 15:00 | 2019-03-22 10:00 | 258 | 50d | Programador Junior1 |
| 267 | 1.4.2.4.7 | **Función de códigos QR** | 0.25d | 2019-03-20 15:00 | 2019-03-20 17:00 |  | 175d |  |
| 268 | 1.6.3.5.7.1 | Adaptar el lector QR a nuestros programas | 0.25d | 2019-03-20 15:00 | 2019-03-20 17:00 | 260 | 175d | Programador Junior2 |
| 269 | 1.4.2.4.8 | **Interfaz visual agradable** | 0.25d | 2019-03-19 15:00 | 2019-03-19 17:00 |  | 275d |  |
| 270 | 1.6.3.5.8.1 | Programar la interfaz visual | 0.25d | 2019-03-19 15:00 | 2019-03-19 17:00 |  | 275d | Analista-Diseñador; Analista-Programador |
| 271 | 1.6.3.6 | Informar al jefe de progreso semanal | 0.12d | 2019-03-22 15:00 | 2019-03-22 16:00 | 254 |  | Analista-Programador; Director de proyecto |
| 272 | 1.4.2.5 | **Módulo de entretenimiento** | 2d | 2019-03-22 16:00 | 2019-03-26 16:00 | 271 |  |  |
| 273 | 1.4.2.5.1 | **Función de ofrecer entretenimiento al cliente** | 0.12d | 2019-03-22 16:00 | 2019-03-22 17:00 |  | 37.5d |  |
| 274 | 1.6.3.7.1.1 | Asegurar que los programas adecuados están instalados y son accesibles | 0.12d | 2019-03-22 16:00 | 2019-03-22 17:00 |  | 37.5d | Programador Junior1 |
| 275 | 1.4.2.5.2 | **Función de interactuar con el local** | 2d | 2019-03-22 16:00 | 2019-03-26 16:00 |  |  |  |
| 276 | 1.6.3.7.2.1 | Preparar conexiones visuales de camaras | 0.5d | 2019-03-25 08:00 | 2019-03-25 13:00 | 274 | 37.5d | Programador Junior1 |
| 277 | 1.6.3.7.2.2 | Preparar lista de música | 0.06d | 2019-03-22 16:00 | 2019-03-22 16:30 |  | 93.75d | Programador Junior2 |
| 278 | 1.6.3.7.2.3 | Preparar programa de control de interacción | 1d | 2019-03-22 16:00 | 2019-03-25 16:00 |  |  | Analista-Programador |
| 279 | 1.6.3.7.2.4 | Completar programa de control de interacción con los módulos | 1d | 2019-03-25 16:00 | 2019-03-26 16:00 | 278, 277, 276 |  | Programador Senior |

| ID | WBS | Task | Duration | Start | Finish | Predecessors | Total slack | Resources |
| --- | --- | --- | --- | --- | --- | --- | --- | --- |
| 280 | 1.4.2.5.3 | **Interfaz visual agradable** | 0.5d | 2019-03-22 16:00 | 2019-03-25 11:00 |  | 150d |  |
| 281 | 1.6.3.7.3.1 | Programar interfaz visual | 0.5d | 2019-03-22 16:00 | 2019-03-25 11:00 |  | 150d | Analista-Diseñador; Analista-Programador |
| 282 | 1.4.2.6 | **Módulo de monitorización general y gerencia** | 1d | 2019-03-26 16:00 | 2019-03-27 16:00 | 272 |  |  |
| 283 | 1.4.2.6.1 | **Almacén de datos legales** | 1d | 2019-03-26 16:00 | 2019-03-27 16:00 |  |  |  |
| 284 | 1.6.3.8.1.1 | Preparar BD y gestión de BD | 1d | 2019-03-26 16:00 | 2019-03-27 16:00 |  |  | Programador Junior1 |
| 285 | 1.6.3.8.1.2 | Revisar cumplimiento de requerimientos legales de la BD | 0.25d | 2019-03-26 16:00 | 2019-03-27 09:00 |  | 75d | Programador Senior |
| 286 | 1.4.2.6.2 | **Almacén de nóminas** | 1d | 2019-03-26 16:00 | 2019-03-27 16:00 |  |  |  |
| 287 | 1.6.3.8.2.1 | Preparar BD y gestión de BD para nóminas | 1d | 2019-03-26 16:00 | 2019-03-27 16:00 |  |  | Programador Junior2 |
| 288 | 1.6.3.8.2.2 | Automatizar las nóminas y su almacenamiento de datos | 1d | 2019-03-26 16:00 | 2019-03-27 16:00 |  |  | Analista-Programador |
| 289 | 1.4.2.6.3 | **Interfaz visual agrdable** | 0.5d | 2019-03-26 16:00 | 2019-03-27 11:00 |  | 50d |  |
| 290 | 1.6.3.8.3.1 | Programar la interfaz visual | 0.5d | 2019-03-26 16:00 | 2019-03-27 11:00 |  | 50d | Analista-Diseñador; Analista-Programador |
| 291 | 1.4.3 | **Depuración** | 4.19d | 2019-03-27 16:00 | 2019-04-03 08:30 | 227 |  |  |
| 292 | 1.6.4.1 | Informar al jefe del progreso semanal | 0.12d | 2019-03-27 16:00 | 2019-03-27 17:00 |  | 406.25d | Analista-Programador; Director de proyecto |
| 293 | 1.4.3.1 | **Localización de defectos** | 0.69d | 2019-03-27 16:00 | 2019-03-28 13:30 |  |  |  |
| 294 | 1.4.3.1.1 | **Listado de defectos** | 0.5d | 2019-03-27 16:00 | 2019-03-28 11:00 |  |  |  |
| 295 | 1.6.4.2.1.1 | Realizar un listado intensivo de defectos encontrados en la codificación | 0.5d | 2019-03-27 16:00 | 2019-03-28 11:00 |  |  | Programador Senior |
| 296 | 1.4.3.1.2 | **Ubicación de defectos** | 0.19d | 2019-03-28 11:00 | 2019-03-28 13:30 | 294 |  |  |
| 297 | 1.6.4.2.2.1 | Completar listado con posiciones exactas (linea, programa, módulo, etc) de los errores | 0.06d | 2019-03-28 11:00 | 2019-03-28 11:30 |  |  | Programador Senior |
| 298 | 1.6.4.2.2.2 | Incluir en listado posibles relaciones del error con otro módulo o trozo de código | 0.12d | 2019-03-28 11:30 | 2019-03-28 13:30 | 297 |  | Programador Senior |
| 299 | 1.4.3.2 | **Corrección de defectos** | 3.5d | 2019-03-28 13:30 | 2019-04-03 08:30 | 293 |  |  |
| 300 | 1.4.3.2.1 | **Modificaciones necesarias** | 2.5d | 2019-03-28 13:30 | 2019-04-02 08:30 |  |  |  |
| 301 | 1.6.4.3.1.1 | Implementar las modificaciones y arreglos de la codificación | 2.5d | 2019-03-28 13:30 | 2019-04-02 08:30 |  |  | Analista-Programador; Programador Junior1; Programador Junior2; Programador Senior |
| 302 | 1.4.3.2.2 | **Revisión de corrección del defecto** | 1d | 2019-04-02 08:30 | 2019-04-03 08:30 | 300 |  |  |
| 303 | 1.6.4.3.2.1 | Revisar todos los errores del listado para comprobar que han sido arreglados correctamente | 1d | 2019-04-02 08:30 | 2019-04-03 08:30 |  |  | Programador Senior |

| ID | WBS | Task | Duration | Start | Finish | Predecessors | Total slack | Resources |
| --- | --- | --- | --- | --- | --- | --- | --- | --- |
| 304 | 1.5 | **Pruebas del sistema y sus componentes** | 15.02d | 2019-04-03 08:30 | 2019-04-24 08:40 | 203 |  |  |
| 305 | 1.7.1 | Control de riesgos y daños | 1d | 2019-04-03 08:30 | 2019-04-04 08:30 |  | 1402.08d | Analista-Diseñador |
| 306 | 1.7.2 | Informar al jefe del progreso semanal | 0.12d | 2019-04-03 08:30 | 2019-04-03 09:30 |  | 1489.58d | Analista-Diseñador; Analista-Programador; Director de proyecto |
| 307 | 1.5.1 | **Planificación de pruebas** | 2.5d | 2019-04-03 08:30 | 2019-04-05 13:30 |  |  |  |
| 308 | 1.5.1.1 | **Pruebas de aceptación** | 0.5d | 2019-04-03 08:30 | 2019-04-03 13:30 |  |  |  |
| 309 | 1.5.1.1.1 | **Pruebas para los gerentes de local** | 0.5d | 2019-04-03 08:30 | 2019-04-03 13:30 |  |  |  |
| 310 | 1.7.3.1.1.1 | Planear las pruebas basándose en su diseño | 0.5d | 2019-04-03 08:30 | 2019-04-03 13:30 |  |  | Programador Junior1 |
| 311 | 1.5.1.1.2 | **Pruebas sobre el personal de local** | 0.5d | 2019-04-03 08:30 | 2019-04-03 13:30 |  |  |  |
| 312 | 1.7.3.1.2.1 | Planear las pruebas basándose en su diseño | 0.5d | 2019-04-03 08:30 | 2019-04-03 13:30 |  |  | Programador Junior2 |
| 313 | 1.5.1.1.3 | **Pruebas sobre los usuarios del local** | 0.5d | 2019-04-03 08:30 | 2019-04-03 13:30 |  |  |  |
| 314 | 1.7.3.1.3.1 | Planear las pruebas basándose en su diseño | 0.5d | 2019-04-03 08:30 | 2019-04-03 13:30 |  |  | Programador Senior |
| 315 | 1.5.1.1.4 | **Pruebas para los proveedores** | 0.5d | 2019-04-03 08:30 | 2019-04-03 13:30 |  |  |  |
| 316 | 1.7.3.1.4.1 | Planear las pruebas basándose en su diseño | 0.5d | 2019-04-03 08:30 | 2019-04-03 13:30 |  |  | Analista-Diseñador |
| 317 | 1.5.1.2 | **Pruebas del sistema** | 0.5d | 2019-04-03 13:30 | 2019-04-04 08:30 | 308 |  |  |
| 318 | 1.5.1.2.1 | **Pruebas para comunicación con PayPal** | 0.5d | 2019-04-03 13:30 | 2019-04-04 08:30 |  |  |  |
| 319 | 1.7.3.2.1.1 | Planear las pruebas basándose en su diseño | 0.5d | 2019-04-03 13:30 | 2019-04-04 08:30 |  |  | Programador Junior1 |
| 320 | 1.5.1.2.2 | **Pruebas para comunicación con terminales TPV** | 0.5d | 2019-04-03 13:30 | 2019-04-04 08:30 |  |  |  |
| 321 | 1.7.3.2.2.1 | Planear las pruebas basándose en su diseño | 0.5d | 2019-04-03 13:30 | 2019-04-04 08:30 |  |  | Programador Junior2 |
| 322 | 1.5.1.2.3 | **Pruebas para comunicación con tablets de local** | 0.5d | 2019-04-03 13:30 | 2019-04-04 08:30 |  |  |  |
| 323 | 1.7.3.2.3.1 | Planear las pruebas basándose en su diseño | 0.5d | 2019-04-03 13:30 | 2019-04-04 08:30 |  |  | Programador Senior |
| 324 | 1.5.1.3 | **Pruebas de integración** | 0.5d | 2019-04-04 08:30 | 2019-04-04 13:30 | 317 |  |  |
| 325 | 1.5.1.3.1 | **Pruebas para comunicación entre módulos** | 0.5d | 2019-04-04 08:30 | 2019-04-04 13:30 |  |  |  |
| 326 | 1.7.3.3.1.1 | Planear las pruebas basándose en su diseño | 0.5d | 2019-04-04 08:30 | 2019-04-04 13:30 |  |  | Programador Senior |
| 327 | 1.5.1.4 | **Pruebas de unidad** | 1d | 2019-04-04 13:30 | 2019-04-05 13:30 | 324 |  |  |
| 328 | 1.5.1.4.1 | **Pruebas de módulo de monitorización general del sistema** | 0.5d | 2019-04-04 13:30 | 2019-04-05 08:30 |  |  |  |
| 329 | 1.7.3.4.1.1 | Planear las pruebas basándose en su diseño | 0.5d | 2019-04-04 13:30 | 2019-04-05 08:30 |  |  | Programador Junior1 |

| ID | WBS | Task | Duration | Start | Finish | Predecessors | Total slack | Resources |
| --- | --- | --- | --- | --- | --- | --- | --- | --- |
| 330 | 1.5.1.4.2 | **Pruebas de módulo de entretenimiento** | 0.5d | 2019-04-04 13:30 | 2019-04-05 08:30 |  |  |  |
| 331 | 1.7.3.4.2.1 | Planear las pruebas basándose en su diseño | 0.5d | 2019-04-04 13:30 | 2019-04-05 08:30 |  |  | Programador Junior2 |
| 332 | 1.5.1.4.3 | **Pruebas de módulo para muestra de datos y comandas** | 0.5d | 2019-04-04 13:30 | 2019-04-05 08:30 |  |  |  |
| 333 | 1.7.3.4.3.1 | Planear las pruebas basándose en su diseño | 0.5d | 2019-04-04 13:30 | 2019-04-05 08:30 |  |  | Programador Senior |
| 334 | 1.5.1.4.4 | **Pruebas de módulo de gestión de proveedores** | 0.5d | 2019-04-05 08:30 | 2019-04-05 13:30 | 328 |  |  |
| 335 | 1.7.3.4.4.1 | Planear las pruebas basándose en su diseño | 0.5d | 2019-04-05 08:30 | 2019-04-05 13:30 |  |  | Programador Junior1 |
| 336 | 1.5.1.4.5 | **Pruebas de módulo del camarero** | 0.5d | 2019-04-05 08:30 | 2019-04-05 13:30 | 330 |  |  |
| 337 | 1.7.3.4.5.1 | Planear las pruebas basándose en su diseño | 0.5d | 2019-04-05 08:30 | 2019-04-05 13:30 |  |  | Programador Junior2 |
| 338 | 1.5.1.4.6 | **Pruebas del módulo de cocinas/barra** | 0.5d | 2019-04-05 08:30 | 2019-04-05 13:30 | 332 |  |  |
| 339 | 1.7.3.4.6.1 | Planear las pruebas basándose en su diseño | 0.5d | 2019-04-05 08:30 | 2019-04-05 13:30 |  |  | Programador Senior |
| 340 | 1.5.2 | **Ejecución de pruebas** | 10d | 2019-04-05 13:30 | 2019-04-19 13:30 | 307 |  |  |
| 341 | 1.5.2.1 | **Ejecución de casos de prueba** | 3d | 2019-04-05 13:30 | 2019-04-10 13:30 |  |  |  |
| 342 | 1.5.2.1.1 | **Ejecución de conjunto de casos de unidad** | 2d | 2019-04-05 13:30 | 2019-04-09 13:30 |  | 100d |  |
| 343 | 1.7.4.1.1.1 | Dividir los equipos para ejecutar las pruebas de cada unidad | 0.5d | 2019-04-05 13:30 | 2019-04-08 08:30 |  |  | Programador Senior |
| 344 | 1.7.4.1.1.2 | Ejecutar las pruebas de cada módulo individual | 2d | 2019-04-05 13:30 | 2019-04-09 13:30 |  | 100d | Analista-Programador |
| 345 | 1.5.2.1.2 | **Ejecución de conjunto de casos de integración** | 2.5d | 2019-04-05 13:30 | 2019-04-10 08:30 |  | 50d |  |
| 346 | 1.7.4.1.2.1 | Ejecutar las pruebas para comprobar que la integración de módulos no tiene fallos | 2.5d | 2019-04-05 13:30 | 2019-04-10 08:30 |  | 50d | Programador Junior1 |
| 347 | 1.5.2.1.3 | **Ejecución de conjunto de casos de sistema** | 2.5d | 2019-04-05 13:30 | 2019-04-10 08:30 |  | 50d |  |
| 348 | 1.7.4.1.3.1 | Ejecutar las pruebas de sistema | 2.5d | 2019-04-05 13:30 | 2019-04-10 08:30 |  | 50d | Programador Junior2 |
| 349 | 1.7.4.1.4 | Informar al jefe del progreso semanal | 0.12d | 2019-04-05 13:30 | 2019-04-05 14:30 |  | 287.5d | Analista-Programador; Director de proyecto |
| 350 | 1.5.2.1.4 | **Ejecución de conjunto de casos de validación** | 2.5d | 2019-04-08 08:30 | 2019-04-10 13:30 |  |  |  |
| 351 | 1.7.4.1.5.1 | Ejecutar las pruebas de validación del programa | 2.5d | 2019-04-08 08:30 | 2019-04-10 13:30 | 343 |  | Programador Senior |
| 352 | 1.5.2.2 | **Listado de errores** | 2.5d | 2019-04-10 13:30 | 2019-04-15 08:30 | 341 |  |  |
| 353 | 1.5.2.2.1 | **Enumeración de errores graves** | 2d | 2019-04-10 13:30 | 2019-04-12 13:30 |  |  |  |
| 354 | 1.7.4.2.1.1 | Crear un listado con los errores que se consideran más graves | 0.5d | 2019-04-10 13:30 | 2019-04-11 08:30 |  |  | Analista-Programador |
| 355 | 1.7.4.2.1.2 | Analizar cuales de los errores son tan graves como se estima y cuales pueden desestimarse | 1.5d | 2019-04-11 08:30 | 2019-04-12 13:30 | 354 |  | Analista-Programador |

| ID | WBS | Task | Duration | Start | Finish | Predecessors | Total slack | Resources |
| --- | --- | --- | --- | --- | --- | --- | --- | --- |
| 356 | 1.5.2.2.2 | **Desestimación de errores leves o de otro tipo** | 0.5d | 2019-04-12 13:30 | 2019-04-15 08:30 |  |  |  |
| 357 | 1.7.4.2.2.1 | Analizar los errores leves para observar que alguna combinación de estos no cause problemas graves | 0.5d | 2019-04-12 13:30 | 2019-04-15 08:30 | 355 |  | Programador Senior |
| 358 | 1.7.4.2.3 | Informar al jefe del progreso semanal | 0.12d | 2019-04-10 13:30 | 2019-04-10 14:30 |  | 237.5d | Director de proyecto; Programador Senior |
| 359 | 1.5.2.3 | **Corrección de errores** | 2.5d | 2019-04-15 08:30 | 2019-04-17 13:30 | 352 |  |  |
| 360 | 1.5.2.3.1 | **Depuración de errores** | 2d | 2019-04-15 08:30 | 2019-04-17 08:30 |  |  |  |
| 361 | 1.7.4.3.1.1 | Arreglar todos los errores graves | 2d | 2019-04-15 08:30 | 2019-04-17 08:30 |  |  | Programador Senior |
| 362 | 1.7.4.3.1.2 | Arreglar los errores leves que causen errores graves como conjunto | 2d | 2019-04-15 08:30 | 2019-04-17 08:30 |  |  | Programador Junior1; Programador Junior2 |
| 363 | 1.5.2.3.2 | **Verificación de corrección** | 0.5d | 2019-04-17 08:30 | 2019-04-17 13:30 | 360 |  |  |
| 364 | 1.7.4.3.2.1 | Comprobar que las correcciones han sido realizadas sin causar mas errores | 0.5d | 2019-04-17 08:30 | 2019-04-17 13:30 |  |  | Analista-Programador |
| 365 | 1.5.2.4 | **Verificación de terminación** | 2d | 2019-04-17 13:30 | 2019-04-19 13:30 | 359 |  |  |
| 366 | 1.5.2.4.1 | **Revisión de listado de errores** | 1.5d | 2019-04-17 13:30 | 2019-04-19 08:30 |  |  |  |
| 367 | 1.7.4.4.1.1 | Revisar el listado de errores e informe de correcciones | 1.5d | 2019-04-17 13:30 | 2019-04-19 08:30 |  |  | Analista-Programador |
| 368 | 1.5.2.4.2 | **Aprobación formal de finalización** | 0.5d | 2019-04-19 08:30 | 2019-04-19 13:30 | 366 |  |  |
| 369 | 1.7.4.4.2.1 | Reunirse con el encargado para formalizar la validación e informar del progreso semanal | 0.5d | 2019-04-19 08:30 | 2019-04-19 13:30 |  |  | Analista-Programador; Director de proyecto |
| 370 | 1.5.3 | **Análisis de errores y evaluación** | 2.52d | 2019-04-19 13:30 | 2019-04-24 08:40 | 340 |  |  |
| 371 | 1.5.3.1 | **Creación de documento de errores** | 1d | 2019-04-19 13:30 | 2019-04-22 13:30 |  |  |  |
| 372 | 1.7.5.1.1 | Redactar documento de errores | 1d | 2019-04-19 13:30 | 2019-04-22 13:30 |  |  | Analista-Programador |
| 373 | 1.5.3.2 | **Catalogación de errores** | 1d | 2019-04-19 13:30 | 2019-04-22 13:30 |  |  |  |
| 374 | 1.7.5.2.1 | Catalogar errores basandose en el análisis realizado en la ejecución de pruebas | 1d | 2019-04-19 13:30 | 2019-04-22 13:30 | 356, 353 |  | Analista-Programador |
| 375 | 1.5.3.3 | **Realización de análisis estadísticos** | 1.5d | 2019-04-22 13:30 | 2019-04-24 08:30 | 373, 371 |  |  |
| 376 | 1.7.5.3.1 | Realizar análisis estadístico de errores | 1d | 2019-04-22 13:30 | 2019-04-23 13:30 |  |  | Analista-Diseñador; Analista-Programador |
| 377 | 1.7.5.3.2 | Redactar informe estadístico | 0.5d | 2019-04-23 13:30 | 2019-04-24 08:30 | 376 |  | Analista-Diseñador; Analista-Programador |
| 378 | 1.5.3.4 | **Adición al archivo de proyectos de la empresa** | 0.02d | 2019-04-24 08:30 | 2019-04-24 08:40 | 375, 373, 371 |  |  |
| 379 | 1.7.5.4.1 | Añadir los documentos creados al archivo de la empresa | 0.02d | 2019-04-24 08:30 | 2019-04-24 08:40 |  |  | Director de proyecto |
